# Project Plan

How a schedule from MS Project changed from version to version. A marks actual dates.

## Version 1 (saved 2023-05-04)

Note of the change: Added required documentation for home viewing

| ID | WBS | Task | Duration | Start | Finish | Predecessors | Complete | Total float | Constraint |
| --- | --- | --- | --- | --- | --- | --- | --- | --- | --- |
| 1 | 1 | **Planning Stage** | 5d | 2023-03-08 A | 2023-03-14 A |  | 100% |  |  |
| 2 |  | Write project proposal | 1d | 2023-03-08 A | 2023-03-08 A |  | 100% |  |  |
| 3 |  | Write project requirements | 1d | 2023-03-09 A | 2023-03-09 A | 2 | 100% |  |  |
| 4 |  | Write project plan | 1d | 2023-03-10 A | 2023-03-10 A | 3 | 100% |  |  |
| 5 | 1.4 | **Milestones** | 0d | 2023-03-14 A | 2023-03-14 A |  | 100% |  |  |
| 6 |  | Submit project proposal | 0d | 2023-03-14 A | 2023-03-14 A |  | 100% |  |  |
| 7 |  | Submit project requirements | 0d | 2023-03-14 A | 2023-03-14 A |  | 100% |  |  |
| 8 |  | Submit project plan | 0d | 2023-03-14 A | 2023-03-14 A |  | 100% |  |  |
| 9 | 2 | **Development stage** | 57d? | 2023-03-15 A | 2023-06-01 | 1 | 17% |  |  |
| 10 | 2.1 | **Design portion** | 13d | 2023-03-15 A | 2023-03-31 A |  | 100% |  |  |
| 11 |  | Write up GDD | 0.5d | 2023-03-15 A | 2023-03-15 A |  | 100% |  |  |
| 12 |  | Write up testing plan | 0.5d | 2023-03-15 A | 2023-03-15 A | 11 | 100% |  |  |
| 13 | 2.1.3 | **Milestones** | 0d | 2023-03-31 A | 2023-03-31 A |  | 100% |  |  |
| 14 |  | Submit GDD | 0d | 2023-03-31 A | 2023-03-31 A |  | 100% |  | finish no earlier than 2023-03-31 |
| 15 |  | Submit testing plan | 0d | 2023-03-31 A | 2023-03-31 A | 14 | 100% |  | finish no earlier than 2023-03-31 |
| 16 | 2.2 | **Implementation portion** | 32d | 2023-04-19 | 2023-06-01 |  | 16% |  |  |
| 17 | 2.2.1 | **Art** | 5d | 2023-04-27 | 2023-05-03 |  |  | -26d |  |
| 18 |  | Player art | 1d | 2023-04-27 | 2023-04-27 |  |  | -26d | start no earlier than 2023-04-27 |
| 19 |  | Background art | 1d | 2023-04-28 | 2023-04-28 | 18 |  | -26d |  |
| 20 |  | Geometry art | 1d | 2023-05-01 | 2023-05-01 | 19 |  | -26d |  |
| 21 |  | Obstacle art | 1d | 2023-05-02 | 2023-05-02 | 20 |  | -26d |  |
| 22 |  | UI art | 1d | 2023-05-03 | 2023-05-03 | 21 |  | -26d |  |
| 23 |  | Upload all art to version control | 0d | 2023-05-03 | 2023-05-03 | 22 |  | -26d |  |
| 24 | 2.2.2 | **Animation** | 4.5d | 2023-05-04 | 2023-05-10 | 17 |  | -26d |  |
| 25 |  | Player animation | 0.5d | 2023-05-04 | 2023-05-04 |  |  | -26d |  |
| 26 |  | Background animation | 1d | 2023-05-04 | 2023-05-05 | 25 |  | -26d |  |
| 27 |  | Geometry animation | 1d | 2023-05-05 | 2023-05-08 | 26 |  | -26d |  |
| 28 |  | Obstacle animation | 1d | 2023-05-08 | 2023-05-09 | 27 |  | -26d |  |
| 29 |  | UI animation | 1d | 2023-05-09 | 2023-05-10 | 28 |  | -26d |  |
| 30 |  | Upload all animation to version control | 0d | 2023-05-10 | 2023-05-10 | 29 |  | -26d |  |
| 31 | 2.2.3 | **Music** | 0.5d | 2023-05-10 | 2023-05-10 | 24 |  | -26d |  |
| 32 |  | Base theme | 0.5d | 2023-05-10 | 2023-05-10 |  |  | -26d |  |
| 33 |  | Upload all music to version control | 0d | 2023-05-10 | 2023-05-10 |  |  | -25.5d |  |
| 34 | 2.2.4 | **Sound** | 4d | 2023-05-11 | 2023-05-16 | 31 |  | -26d |  |
| 35 |  | Player sounds | 1d | 2023-05-11 | 2023-05-11 |  |  | -26d |  |
| 36 |  | Background sounds | 1d | 2023-05-12 | 2023-05-12 | 35 |  | -26d |  |
| 37 |  | Obstacle sounds | 1d | 2023-05-15 | 2023-05-15 | 36 |  | -26d |  |
| 38 |  | UI sounds | 1d | 2023-05-16 | 2023-05-16 | 37 |  | -26d |  |
| 39 |  | Upload all sounds to version control | 0d | 2023-05-16 | 2023-05-16 | 38 |  | -26d |  |
| 40 | 2.2.5 | **Level Building** | 2d | 2023-05-17 | 2023-05-18 | 34 |  | -26d |  |
| 41 |  | Create the level layouts in the engine | 1d | 2023-05-17 | 2023-05-17 |  |  | -26d |  |
| 42 |  | Edit the level layouts with new information | 1d | 2023-05-18 | 2023-05-18 | 41 |  | -26d |  |
| 43 |  | Upload all level changes to version control | 0d | 2023-05-18 | 2023-05-18 | 42 |  | -26d |  |
| 44 | 2.2.6 | **Coding** | 31d | 2023-04-20 A | 2023-06-01 | 40 | 21% |  |  |
| 45 | 2.2.6.1 | **Player** | 5d | 2023-04-20 A | 2023-04-26 A |  | 100% |  |  |
| 46 |  | Movement | 0d | 2023-04-20 A | 2023-04-20 A |  | 100% |  |  |
| 47 |  | Jumping | 5d | 2023-04-20 A | 2023-04-26 A |  | 100% |  |  |
| 48 | 2.2.6.2 | **Background** | 5d | 2023-04-27 | 2023-05-03 | 45 |  | -10d |  |
| 49 |  | Interact with level | 5d | 2023-04-27 | 2023-05-03 |  |  | -10d |  |
| 50 | 2.2.6.3 | **Obstacles** | 5d | 2023-05-03 | 2023-05-09 | 48 | 68% |  |  |
| 51 |  | Interact with level geometry | 5d | 2023-05-03 A | 2023-05-09 |  | 35% | 28d | finish no earlier than 2023-05-09 |
| 52 |  | Interact with player objects | 5d | 2023-04-20 A | 2023-04-26 A |  | 100% |  |  |
| 53 | 2.2.6.4 | **UI** | 7d | 2023-05-10 | 2023-05-18 | 50 |  | 2d |  |
| 54 |  | Update current height | 7d | 2023-05-10 | 2023-05-18 |  |  | 2d |  |
| 55 |  | Display height | 7d | 2023-05-10 | 2023-05-18 |  |  | 2d |  |
| 56 |  | Display lives | 7d | 2023-05-10 | 2023-05-18 |  |  | 2d |  |
| 57 |  | Display current upgrades | 7d | 2023-05-10 | 2023-05-18 |  |  | 2d |  |
| 58 | 2.2.6.5 | **Mechanics** | 7d | 2023-05-19 | 2023-05-29 | 53 |  | 2d |  |
| 59 |  | Upgrade application | 7d | 2023-05-19 | 2023-05-29 |  |  | 2d |  |
| 60 | 2.2.6.6 | **Milestones** | 0d | 2023-06-01 | 2023-06-01 | 58 |  | 0d |  |
| 61 |  | Upload all code to version control | 0d | 2023-06-01 | 2023-06-01 |  |  |  |  |
| 62 | 2.2.7 | **Testing** | 0d | 2023-06-01 | 2023-06-01 | 44 |  |  |  |
| 63 |  | Test game based on plan | 1d | 2023-06-01 | 2023-06-01 |  |  | 10d | finish no earlier than 2023-06-01 |
| 64 |  | Record test results | 0d | 2023-06-01 | 2023-06-01 | 63 |  | 10d |  |
| 65 | 2.2.8 | **Ending Milestones** | 0d | 2023-06-01 | 2023-06-01 | 62 |  | 10d |  |
| 66 |  | Submit Game | 0d | 2023-06-01 | 2023-06-01 |  |  | 11d |  |
| 67 |  | Submit testing results | 0d | 2023-06-01 | 2023-06-01 |  |  | 11d |  |
| 68 | 3 | **Evaluation stage** | 11d | 2023-06-02 | 2023-06-16 | 9 |  | 0d |  |
| 69 |  | Write up evaluation document | 1d | 2023-06-02 | 2023-06-02 |  |  | 10d |  |
| 70 | 3.2 | **Milestones** | 0d | 2023-06-16 | 2023-06-16 |  |  | 0d |  |

| ID | Task | Duration | Start | Finish | Predecessors |
| --- | --- | --- | --- | --- | --- |
| 71 | Submit evaluation document | 0d | 2023-06-16 | 2023-06-16 | 69 |

## Version 2 (saved 2023-06-07)

Note of the change: updated project plan with comments added

Last finish stays 2023-06-16. Complete tasks 13 → 29.

Changed:

| ID | Task | Start | Finish | Complete | Total float | Other |
| --- | --- | --- | --- | --- | --- | --- |
| 9 | **Development stage** |  |  | 17% → 58% |  |  |
| 16 | **Implementation portion** |  |  | 16% → 58% |  |  |
| 17 | **Art** | 2023-04-27 A | 2023-05-03 A | 0% → 100% | -26d → none |  |
| 18 | Player art | 2023-04-27 A | 2023-04-27 A | 0% → 100% | -26d → none |  |
| 19 | Background art | 2023-04-28 A | 2023-04-28 A | 0% → 100% | -26d → none |  |
| 20 | Geometry art | 2023-05-01 A | 2023-05-01 A | 0% → 100% | -26d → none |  |
| 21 | Obstacle art | 2023-05-02 A | 2023-05-02 A | 0% → 100% | -26d → none |  |
| 22 | UI art | 2023-05-03 A | 2023-05-03 A | 0% → 100% | -26d → none |  |
| 23 | Upload all art to version control | 2023-05-03 A | 2023-05-03 A | 0% → 100% | -26d → none |  |
| 31 | **Music** | 2023-05-10 A | 2023-05-10 A | 0% → 100% | -26d → none |  |
| 32 | Base theme | 2023-05-10 A | 2023-05-10 A | 0% → 100% | -26d → none |  |
| 33 | Upload all music to version control | 2023-05-10 A | 2023-05-10 A | 0% → 100% | -25.5d → none |  |
| 34 | **Sound** |  |  |  | -26d → 22d | resources Audacity [1 Software]; Github Desktop [1 Version control]; Google Chrome [1 Web Browser]; Jaye Bell [1 Personnel]; Studio Microphone [1 Hardware]; Microsoft Windows 10 computer [1 Operating System] → none |
| 40 | **Level Building** | 2023-05-17 A | 2023-05-18 A | 0% → 100% | -26d → none |  |
| 41 | Create the level layouts in the engine | 2023-05-17 A | 2023-05-17 A | 0% → 100% | -26d → none |  |
| 42 | Edit the level layouts with new information | 2023-05-18 A | 2023-05-18 A | 0% → 100% | -26d → none |  |
| 43 | Upload all level changes to version control | 2023-05-18 A | 2023-05-18 A | 0% → 100% | -26d → none |  |
| 44 | **Coding** |  |  | 21% → 62% |  |  |
| 48 | **Background** | 2023-04-27 A | 2023-05-03 A | 0% → 100% | -10d → none |  |
| 49 | Interact with level | 2023-04-27 A | 2023-05-03 A | 0% → 100% | -10d → none |  |
| 50 | **Obstacles** |  | 2023-05-09 A | 68% → 100% |  |  |
| 51 | Interact with level geometry |  | 2023-05-09 A | 35% → 100% | 28d → none |  |
| 53 | **UI** | 2023-05-10 A |  | 0% → 50% |  |  |
| 54 | Update current height | 2023-05-10 A | 2023-05-18 A | 0% → 100% | 2d → none |  |
| 55 | Display height | 2023-05-10 A | 2023-05-18 A | 0% → 100% | 2d → none |  |
| 60 | **Milestones** | 2023-06-01 A |  |  |  |  |
| 61 | Upload all code to version control | 2023-06-01 A |  | 0% → 70% |  |  |
| 65 | **Ending Milestones** | 2023-06-01 A |  |  |  |  |
| 66 | Submit Game | 2023-06-01 A | 2023-06-01 A | 0% → 100% | 11d → none |  |
